# Предварительный план2007

Schedule from MS Project, 2013-04-22 to 2014-09-11, A marks actual dates.

## Calendars

- Стандартный: Mon-Fri 09:00-13:00, 14:00-18:00; Sat-Sun off. Exceptions (off unless hours are given): 2013-05-01 to 2013-05-05 (Первое мая), 2013-05-09 to 2013-05-12 (Девятое мая), 2013-12-30 to 2014-01-08 (новый год).

## Resources

| Resource |
| --- |
| Шилин Роман |
| Аналитик |
| Андрей Пирожков |
| Тугушев Илья |
| Денис Митавский |
| Алексей Львов |
| Андрей Карандей |
| Валерий Мацукевич |
| Java разработчик3 |
| Java разработчик4 |
| WEB-дизайнер |
| Влад Симоненко |
| Андрей Цветков |
| Java разработчик5 |
| Тест Аналитик |
| Java разработчик6 |
| Тестировщик |
| Технический писатель |
| Технолог - администратор |
| Технический писатель2 |
| Системный аналитик1 |
| Системный аналитик2 |
| Системный аналитик3 |
| Системный аналитик4 |
| Владимир Панов |
| Сергей Кашанский |
| Роман Митинков |
| Роман Болотов |
| Глеб Ноздрачев |
| Евгения Капустина |
| Эдуард Михайлов |
| Тимофей Билый |
| (БТЛ) Михаил Ларин |
| (БТЛ) Олег Еренцов |
| (БТЛ) Дмитрий Лякин |
| (БТЛ)Сергей Степыгин |
| Ярослав Бондарчук |
| Александр Власюк |

## Schedule

| ID | WBS | Task | Type | Duration | Start | Finish | Predecessors | Complete | Remaining | Total slack | Free slack | Constraint | Resources | Work | Actual work |
| --- | --- | --- | --- | --- | --- | --- | --- | --- | --- | --- | --- | --- | --- | --- | --- |
| 1 | 1 | **Разработка версии CM4/5** |  | 351d? | 2013-04-22 A | 2014-09-11 |  | 25% | 261.77d? | 0d |  |  |  | 26780.7h | 6728.36h |
| 2 | 1.1 | Принято решение о начале разработки | milestone | 0d | 2013-04-22 | 2013-04-22 |  |  |  | 0d |  | start no earlier than 2013-04-22 |  |  |  |
| 3 | 1.2 | Управление проектом |  | 267d | 2013-04-22 A | 2014-05-16 | 2 | 35% | 173.55d | 84d |  |  | Шилин Роман | 2136h | 747.6h |
| 4 | 1.3 | **Управление требованиями** |  | 331d | 2013-05-27 A | 2014-09-11 | 2 | 19% | 268.4d | 0d |  |  | Аналитик | 4567.2h | 1034.44h |
| 5 | 1.3.1 | Выделен аналитик на проект | milestone | 0d | 2013-05-27 A | 2013-05-27 A |  | 100% |  |  |  | start no earlier than 2013-05-27 |  |  |  |
| 6 | 1.3.2 | Формирование скоупа проекта _ верхний уровень |  | 15d | 2013-05-27 A | 2013-06-14 A | 5 | 100% |  |  |  |  | Евгения Капустина | 120h | 120h |
| 7 | 1.3.3 | Скоуп на систему сформирован и утвержден | milestone | 0d | 2013-06-21 A | 2013-06-21 A | 6FS+5d | 100% |  |  |  |  |  |  |  |
| 8 | 1.3.4 | Сопровождение требований |  | 311d | 2013-06-24 A | 2014-09-11 | 5, 7 | 15% | 264.35d | 0d |  |  | Эдуард Михайлов; Евгения Капустина | 1799.2h | 503.8h |
| 9 | 1.4 | **Создание модуля "Делопроизводство" (документоориентированная среда)** |  | 277.2d? | 2013-04-22 A | 2014-06-02 |  | 25% | 207.31d? | 73.8d |  |  |  | 20077.5h | 4946.32h |
| 10 | 1.4.1 | Первичные требования для создания модуля "Делопроизводство" подготовлены | milestone | 0d | 2013-04-22 | 2013-04-22 | 2 |  |  | 0d |  | finish no earlier than 2012-04-02 |  |  |  |
| 11 | 1.4.2 | **Апробация идей прототипа** |  | 24d | 2013-04-29 A | 2013-06-06 |  | 99% | 0d | 322d |  |  |  | 144h | 144h |
| 12 | 1.4.2.1 | Пирожков доступен | milestone | 0d | 2013-06-03 | 2013-06-03 |  |  |  | 326d |  | start no earlier than 2013-06-03 |  |  |  |
| 13 | 1.4.2.2 | Проведение предварительных испытаний системы |  | 9d | 2013-04-29 A | 2013-05-16 A | 10FS+5d | 100% |  |  |  |  | Андрей Цветков | 72h | 72h |
| 14 | 1.4.2.3 | Описание обработки ВХ. Док. На примере технологий прототипа |  | 9d | 2013-05-20 A | 2013-06-06 A |  | 100% |  |  |  | start no earlier than 2013-05-20 | Андрей Пирожков | 72h | 72h |
| 15 | 1.4.3 | **Настройка инфраструктуры** |  | 37d | 2013-05-20 A | 2013-07-09 | 24 | 67% | 12.33d | 125.97d | 0d |  |  | 120h | 80h |
| 16 | 1.4.3.1 | Настройка непрерывной интеграции |  | 4d | 2013-05-20 A | 2013-05-23 A |  | 100% |  |  |  |  | Тугушев Илья | 32h | 32h |
| 17 | 1.4.3.2 | Поддержка UNIT-тестирования и интеграционного тестирования на уроне среды непрерывной интеграции |  | 5d | 2013-06-04 | 2013-06-10 |  |  |  | 146.97d |  | start no earlier than 2013-06-04 | Тугушев Илья | 40h |  |
| 18 | 1.4.3.3 | Репакеджинг проекта |  | 3d | 2013-05-27 A | 2013-05-29 A |  | 100% |  |  |  | start no earlier than 2013-05-27 | Сергей Кашанский | 24h | 24h |
| 19 | 1.4.3.4 | Автоматическое заполнение параметров JDBC через Maven |  | 3d | 2013-07-05 A | 2013-07-09 A | 30 | 100% |  |  |  |  | Андрей Цветков | 24h | 24h |
| 20 | 1.4.4 | **Проектирование и формирование ядра системы** |  | 197.2d? | 2013-04-22 A | 2014-02-10 | 10 | 30% | 138.2d? | 85.8d | 0d |  |  | 11873.5h | 3795.92h |
| 21 | 1.4.4.1 | **Определение структуры модуля Делопроизводство** |  | 25d | 2013-04-22 A | 2013-05-31 A |  | 100% |  |  |  |  |  | 352h | 352h |
| 22 | 1.4.4.1.1 | Разбивка на слои |  | 5d | 2013-04-22 A | 2013-04-26 A |  | 100% |  |  |  |  | Денис Митавский [50%]; Андрей Пирожков [50%] | 40h | 40h |
| 23 | 1.4.4.1.2 | Конфигурации, загрузка и инициализация системы в базовой конфигурации |  | 5d | 2013-04-29 A | 2013-05-08 A | 22 | 100% |  |  |  |  | Валерий Мацукевич; Денис Митавский [50%] | 60h | 60h |
| 24 | 1.4.4.1.3 | Базовая конфигурация объектов системы |  | 5d | 2013-05-13 A | 2013-05-17 A | 22, 23 | 100% |  |  |  |  | Денис Митавский [50%]; Валерий Мацукевич | 60h | 60h |
| 25 | 1.4.4.1.4 | Юнит-тестирование - базис |  | 6d | 2013-05-17 A | 2013-05-24 A | 13 | 100% |  |  |  |  | Денис Митавский [50%]; Андрей Цветков | 72h | 72h |
| 26 | 1.4.4.1.5 | Базовая имплементация слоя DAO |  | 5d | 2013-05-20 A | 2013-05-24 A | 24 | 100% |  |  |  |  | Валерий Мацукевич | 40h | 40h |
| 27 | 1.4.4.1.6 | Обеспечение программных компонет верификации первой очереди |  | 5d | 2013-05-27 A | 2013-05-31 A | 26 | 100% |  |  |  |  | Валерий Мацукевич; Андрей Цветков | 80h | 80h |

Notes:
- 27: UNIT тестирование в рамках наработанного кода

| ID | WBS | Task | Type | Duration | Start | Finish | Predecessors | Complete | Remaining | Total slack | Free slack | Constraint | Resources | Work | Actual work |
| --- | --- | --- | --- | --- | --- | --- | --- | --- | --- | --- | --- | --- | --- | --- | --- |
| 28 | 1.4.4.2 | **DAO** |  | 43d? | 2013-06-03 A | 2013-07-31 A | 26, 27 | 100% |  |  |  |  |  | 224h | 224h |
| 29 | 1.4.4.2.1 | DAO для бизнес-объектов |  | 7d | 2013-06-03 A | 2013-06-11 A |  | 100% |  |  |  |  | Валерий Мацукевич | 56h | 56h |
| 30 | 1.4.4.2.2 | DAO для коллекций |  | 13d | 2013-06-12 A | 2013-07-04 A | 29 | 100% |  |  |  |  | Андрей Цветков | 104h | 104h |
| 31 | 1.4.4.2.3 | Функционал системы готов для проведения проектирования интеграции с GUI СМ4 | milestone | 0d | 2013-06-24 A | 2013-06-24 A | 29, 30 | 100% |  |  |  |  |  |  |  |
| 32 | 1.4.4.2.4 | DAO - утилитарные поля |  | 6d | 2013-06-25 A | 2013-07-08 A | 30 | 100% |  |  |  |  | Денис Митавский [50%] | 24h | 24h |
| 33 | 1.4.4.2.5 | DAO - кэш уровня транзакции |  | 5d? | 2013-07-25 A | 2013-07-31 A | 305 | 100% |  |  |  |  | Влад Симоненко | 40h | 40h |
| 34 | 1.4.4.3 | CRUD-сервис для бизнес-объектов |  | 10d | 2013-06-11 A | 2013-06-24 A | 30FF | 100% |  |  |  |  | Андрей Цветков | 80h | 80h |
| 35 | 1.4.4.4 | Расширение CRUD для интеграции с CMJ |  | 5d | 2013-08-08 A | 2013-08-14 A |  | 100% |  |  |  | start no earlier than 2013-08-08 | Андрей Карандей | 40h | 40h |
| 36 | 1.4.4.5 | Поддержка отсортированных дочерних бизнес-объектов |  | 5d | 2013-08-21 | 2013-08-27 | 53 |  |  | 21.14d | 0d |  | Валерий Мацукевич | 40h |  |
| 37 | 1.4.4.6 | Настройка Datasources/Jaas сервера приложений средствами Maven |  | 2d | 2013-07-05 A | 2013-07-08 A | 30 | 100% |  |  |  |  | Сергей Кашанский | 16h | 16h |
| 38 | 1.4.4.7 | Рефакторинг |  | 4d | 2013-07-03 A | 2013-07-08 A | 26 | 100% |  |  |  | start no earlier than 2013-07-03 | Валерий Мацукевич | 32h | 32h |
| 39 | 1.4.4.8 | **Права доступа** |  | 65d | 2013-06-12 A | 2013-09-10 |  | 90% | 6.54d | 186d |  |  |  | 488h | 426.8h |
| 40 | 1.4.4.8.1 | Права - оптимизация хранения (проектирование) |  | 30d | 2013-06-12 A | 2013-07-23 A | 29 | 100% |  |  |  |  | Андрей Пирожков [50%] | 120h | 120h |
| 41 | 1.4.4.8.2 | Описание существующими декларативными средствами конфигурации |  | 19d | 2013-07-16 A | 2013-08-09 A | 40, 19 | 100% |  |  |  |  | Андрей Цветков | 152h | 152h |
| 42 | 1.4.4.8.3 | Автофильтрация |  | 10d | 2013-07-29 A | 2013-08-16 A | 41 | 100% |  |  |  |  | Андрей Цветков | 80h | 80h |
| 43 | 1.4.4.8.4 | Пересчёт прав доступа |  | 17d | 2013-08-19 A | 2013-09-10 | 42 | 55% | 7.65d | 186d |  |  | Андрей Цветков | 136h | 74.8h |
| 44 | 1.4.4.9 | **Workflow - интеграция с Activiti** |  | 91d | 2013-06-07 A | 2013-10-11 A | 14 | 100% |  |  |  |  |  | 344h | 344h |
| 45 | 1.4.4.9.1 | Проектирование |  | 10d | 2013-06-07 A | 2013-07-24 A | 40 | 100% |  |  |  |  | Андрей Пирожков [50%] | 40h | 40h |
| 46 | 1.4.4.9.2 | готова постановка по БП | milestone | 0d | 2013-09-09 A | 2013-09-09 A |  | 100% |  |  |  | start no earlier than 2013-09-09 |  |  |  |
| 47 | 1.4.4.9.3 | Разработка |  | 20d | 2013-09-16 A | 2013-10-11 A | 45, 46 | 100% |  |  |  | start no earlier than 2013-09-16 | (БТЛ) Михаил Ларин | 160h | 160h |
| 48 | 1.4.4.9.4 | **Действия** |  | 18d | 2013-09-18 A | 2013-10-11 A |  | 100% |  |  |  |  |  | 144h | 144h |
| 49 | 1.4.4.9.4.1 | Концепция/Архитектура |  | 4d | 2013-09-18 A | 2013-09-23 A | 332 | 100% |  |  |  | start no earlier than 2013-09-16 | Денис Митавский | 32h | 32h |
| 50 | 1.4.4.9.4.2 | Реализация |  | 14d | 2013-09-24 A | 2013-10-11 A | 49 | 100% |  |  |  |  | (БТЛ) Михаил Ларин | 112h | 112h |
| 51 | 1.4.4.10 | **Наследование ???** |  | 8d | 2013-08-09 A | 2013-08-20 A | 45 | 100% |  |  |  |  | Андрей Пирожков [50%] | 88h | 88h |
| 52 | 1.4.4.10.1 | Проектирование функции "Наследование" |  | 2d | 2013-08-09 A | 2013-08-12 A |  | 100% |  |  |  | finish no earlier than 2013-08-12 | Андрей Пирожков | 16h | 16h |
| 53 | 1.4.4.10.2 | Разработка функции "Наследование" |  | 6d | 2013-08-13 A | 2013-08-20 A | 52 | 100% |  |  |  |  | Валерий Мацукевич | 48h | 48h |

Notes:
- 34: - проектирование базового API / - имплементация
- 36: Для отображени и поддержания заданного порядка следования объектов
- 40: Права доступа - оптимизация подхода, / подбор других названий сущностей (таблицы) переименовать таблицы и улучшить производительность
- 41: Права доступа - описание существующими декларативными средствами конфигурации / (для автоматического создания таблиц) + / конфигурирование под-запроса для фильтрации - там же
- 42: Права доступа - авто-фильтрация / + "внедрение в под-запросы"
- 44: Задачи: / - модель процесса (BPMN) / - Имплементация WF - сервиса , взаимодействие системы с Аctiviti
- 51: Архитектура - форма хранения данных (с учетом производительности) / Наследование типов объектов - уровень DAO

| ID | WBS | Task | Type | Duration | Start | Finish | Predecessors | Complete | Remaining | Total slack | Free slack | Constraint | Resources | Work | Actual work |
| --- | --- | --- | --- | --- | --- | --- | --- | --- | --- | --- | --- | --- | --- | --- | --- |
| 54 | 1.4.4.11 | **Коллекции** |  | 103d | 2013-05-29 A | 2013-10-18 |  | 56% | 45.06d | 125d |  |  |  | 300h | 188h |
| 55 | 1.4.4.11.1 | Коллекции - конфигурация |  | 3d | 2013-05-29 A | 2013-05-31 A |  | 100% |  |  |  |  | Денис Митавский | 24h | 24h |
| 56 | 1.4.4.11.2 | DAO - язык запросов коллекций |  | 12d | 2013-05-29 A | 2013-06-17 A | 55 | 100% |  |  |  |  | Сергей Кашанский; Денис Митавский [50%] | 140h | 140h |
| 57 | 1.4.4.11.3 | Сервис получения и получения счетчиков |  | 3d | 2013-05-29 A | 2013-05-31 A | 55 | 100% |  |  |  |  | Сергей Кашанский | 24h | 24h |
| 58 | 1.4.4.11.4 | Принято решение о работе с ПКД | milestone | 0d | 2013-10-01 | 2013-10-01 |  |  |  | 125d | 0d | start no earlier than 2013-10-01 | Денис Митавский [50%] |  |  |
| 59 | 1.4.4.11.5 | ПКД ???? |  | 14d | 2013-10-01 | 2013-10-18 | 56, 51, 58 |  |  | 125d | 0d |  | Валерий Мацукевич | 112h |  |
| 60 | 1.4.4.12 | **Бизнес-объекты (иерархии доменных объектов)** |  | 56.25d | 2013-07-24 A | 2013-10-10 |  | 90% | 5.79d | 164.75d |  |  |  | 228.8h | 200h |
| 61 | 1.4.4.12.1 | Проектирование |  | 8d | 2013-07-24 A | 2013-08-16 A | 62SF, 52 | 100% |  |  |  |  | Андрей Пирожков [20%] | 12.8h | 12.8h |
| 62 | 1.4.4.12.2 | Реализация1 |  | 3d | 2013-07-31 A | 2013-08-02 A | 330SF | 100% |  |  |  |  | Андрей Пирожков | 24h | 24h |
| 63 | 1.4.4.12.3 | Подготовка описания по обновленным принциапам работы |  | 24d | 2013-08-16 A | 2013-10-10 | 61 | 85% | 3.6d | 164.75d |  |  | Андрей Пирожков | 192h | 163.2h |
| 64 | 1.4.4.13 | **Поиск** |  | 66d | 2013-07-30 A | 2013-10-29 | 34 | 9% | 60.38d | 151d |  |  |  | 380h | 48h |
| 65 | 1.4.4.13.1 | Идея поиска оформлена | milestone | 0d | 2013-09-09 | 2013-09-09 |  |  |  | 145d | 0d | finish no earlier than 2013-09-09 |  |  |  |
| 66 | 1.4.4.13.2 | Поиск |  | 22d | 2013-07-30 A | 2013-10-08 | 65 | 18% | 18d | 151d | 0d |  | Андрей Пирожков [50%]; Андрей Цветков | 180h | 48h |
| 67 | 1.4.4.13.3 | Полнотекстовый поиск |  | 25d | 2013-09-25 | 2013-10-29 | 65, 66FS-10d |  |  | 151d |  |  | Валерий Мацукевич | 200h |  |
| 68 | 1.4.4.14 | **Слой сопряжения CMJ server (CM4)** |  | 156.2d? | 2013-06-25 A | 2014-02-10 |  | 6% | 147.49d? | 85.8d |  |  |  | 4424.72h | 350.72h |
| 69 | 1.4.4.14.1 | Решение принято и ресурсы достуны | milestone | 0d | 2013-08-05 A | 2013-08-05 A |  | 100% |  |  |  | start no earlier than 2013-08-05 |  |  |  |
| 70 | 1.4.4.14.2 | Реализация коннекторов к платформе |  | 97.25d | 2013-08-08 A | 2013-12-23 | 69FS+3d | 29% | 69.25d | 112.75d | 0d |  | Тугушев Илья [75%]; Глеб Ноздрачев | 1120h | 326.48h |
| 71 | 1.4.4.14.3 | Описание решения есть. Можно начинать разработку | milestone | 0d | 2013-08-28 A | 2013-08-28 A |  | 100% |  |  |  | start no earlier than 2013-08-28 |  |  |  |
| 72 | 1.4.4.14.4 | Проработка задания выполнена, можно привлекать разработчиков БТЛ | milestone | 0d | 2013-09-18 A | 2013-09-18 A |  | 100% |  |  |  | start no earlier than 2013-09-18 |  |  |  |
| 73 | 1.4.4.14.5 | Рефакторинг СМ 4.2.1 выполнен | milestone | 0d | 2013-09-30 A | 2013-09-30 |  | 80% | 0d | 172d |  | finish no earlier than 2013-09-30 |  |  |  |
| 74 | 1.4.4.14.6 | Структура хранения определена | milestone | 0d | 2013-10-28 | 2013-10-28 |  |  |  | 127d | 0d | finish no earlier than 2013-10-28 |  |  |  |
| 75 | 1.4.4.14.7 | Проектирование завершено - готовность к интеграции | milestone | 0d | 2013-09-23 | 2013-09-23 |  |  |  | 0d |  | start no earlier than 2013-09-23 |  |  |  |
| 76 | 1.4.4.14.8 | **Интеграция с CMJ по Внутренним Документам** |  | 30.2d? | 2013-09-23 A | 2013-11-04 | 75 | 5% | 28.59d? | 85.8d | 0d |  |  | 907.44h | 24.24h |
| 77 | 1.4.4.14.8.1 | MapperBuilder |  | 9d | 2013-09-23 | 2013-10-03 |  |  |  | 98d | 0d | finish no earlier than 2013-10-01 | Александр Власюк | 72h |  |
| 78 | 1.4.4.14.8.2 | Уточнение расширенной постановки по MapperBuilder выполнена | milestone | 0d | 2013-09-27 A | 2013-09-27 A |  | 100% |  |  |  | start no earlier than 2013-09-27 | Тугушев Илья [80%] |  |  |
| 79 | 1.4.4.14.8.3 | Конфиг ДОП СС |  | 1d | 2013-09-25 A | 2013-09-26 A |  | 100% |  |  |  |  | Глеб Ноздрачев [1%] | 0.08h | 0.08h |
| 80 | 1.4.4.14.8.4 | Mapper СС |  | 2d | 2013-10-04 | 2013-10-07 | 77, 79 |  |  | 102d | 16.2d |  | Глеб Ноздрачев [80%] | 12.8h |  |
| 81 | 1.4.4.14.8.5 | Конфиг ДОП Каталога |  | 3.75d? | 2013-09-24 A | 2013-09-27 A |  | 100% |  |  |  | start no earlier than 2013-09-24 | Глеб Ноздрачев [80%] | 24h | 24h |
| 82 | 1.4.4.14.8.6 | Mapper Каталога |  | 2d | 2013-10-04 | 2013-10-07 | 77, 81, 100 |  |  | 98d | 0d |  | Глеб Ноздрачев [80%] | 12.8h |  |
| 83 | 1.4.4.14.8.7 | Конфиг ДОП Портала |  | 3.75d? | 2013-09-25 | 2013-09-30 |  |  |  | 97.05d | 3.25d | start no earlier than 2013-09-25 | Тугушев Илья [80%] | 24h |  |
| 84 | 1.4.4.14.8.8 | Mapper Портала |  | 2d | 2013-10-04 | 2013-10-07 | 77, 83 |  |  | 99d | 0d |  | Тугушев Илья [80%] | 12.8h |  |
| 85 | 1.4.4.14.8.9 | Конфиг ДОП СО |  | 1d | 2013-09-23 A | 2013-09-23 A |  | 100% |  |  |  |  | Глеб Ноздрачев [1%] | 0.08h | 0.08h |
| 86 | 1.4.4.14.8.10 | Maper СО |  | 2d | 2013-10-08 | 2013-10-09 | 77, 82 |  |  | 98d | 0d |  | Глеб Ноздрачев [80%] | 12.8h |  |
| 87 | 1.4.4.14.8.11 | Конфиг ДОП ВнД |  | 2d | 2013-09-27 | 2013-10-01 | 81 |  |  | 90.25d | 0d |  | Глеб Ноздрачев [80%] | 12.8h |  |
| 88 | 1.4.4.14.8.12 | Mapper ВнД |  | 2d | 2013-10-10 | 2013-10-11 | 77, 86 |  |  | 98d | 12.2d |  | Глеб Ноздрачев [80%] | 12.8h |  |
| 89 | 1.4.4.14.8.13 | Кофиг ДОП СпО |  | 1d | 2013-09-23 A | 2013-09-23 A |  | 100% |  |  |  |  | Глеб Ноздрачев [1%] | 0.08h | 0.08h |
| 90 | 1.4.4.14.8.14 | Mapper СпО |  | 3d | 2013-10-08 | 2013-10-10 | 77, 84 |  |  | 99d | 13.2d |  | Тугушев Илья [80%] | 19.2h |  |
| 91 | 1.4.4.14.8.15 | Аутентификация |  | 2d | 2013-10-15 | 2013-10-17 | 99 |  |  | 90.25d | 0d | start no earlier than 2013-09-30 | Влад Симоненко | 16h |  |
| 92 | 1.4.4.14.8.16 | Вложения |  | 2d | 2013-10-17 | 2013-10-21 | 91 |  |  | 90.25d | 0d |  | Влад Симоненко | 16h |  |
| 93 | 1.4.4.14.8.17 | Форматированный текст |  | 2d | 2013-10-21 | 2013-10-23 | 92 |  |  | 90.25d | 4.45d |  | Влад Симоненко | 16h |  |

Notes:
- 56: DAO - язык запросов коллекций
- 57: Коллекции - сервис получения и получения счетчиков
- 58: Используя язык запросов коллеций
- 59: Для поддержания реализации избранного, отметок о прочтении и т.д.
- 67: Включая взаимодействие с Solr
- 70: Начальная реализация модуля "документооборот" - замена лотуса
- 91: Кто первый освободится Власюк или Симоненко

| ID | WBS | Task | Type | Duration | Start | Finish | Predecessors | Complete | Remaining | Total slack | Free slack | Constraint | Resources | Work |
| --- | --- | --- | --- | --- | --- | --- | --- | --- | --- | --- | --- | --- | --- | --- |
| 94 | 1.4.4.14.8.18 | **Настраиваемые коллекции** |  | 10d? | 2013-10-01 | 2013-10-15 | 81, 87 |  |  | 90.25d | 10.45d |  |  | 171.2h |
| 95 | 1.4.4.14.8.18.1 | **Системные настройки** |  | 9d | 2013-10-01 | 2013-10-14 |  |  |  | 96.25d | 0d |  |  | 72h |
| 96 | 1.4.4.14.8.18.1.1 | XSD-схема XML-настроек |  | 3d | 2013-10-01 | 2013-10-04 |  |  |  | 96.25d | 0d |  | Влад Симоненко | 24h |
| 97 | 1.4.4.14.8.18.1.2 | Чтение XML настроек через спец-Mapper |  | 3d | 2013-10-04 | 2013-10-09 | 96 |  |  | 96.25d | 0d |  | Влад Симоненко | 24h |
| 98 | 1.4.4.14.8.18.1.3 | Mapper папок |  | 3d | 2013-10-09 | 2013-10-14 | 97 |  |  | 96.25d |  |  | Влад Симоненко | 24h |
| 99 | 1.4.4.14.8.18.2 | Builder коллекций |  | 10d | 2013-10-01 | 2013-10-15 |  |  |  | 90.25d | 0d | start no earlier than 2013-09-30 | Влад Симоненко | 80h |
| 100 | 1.4.4.14.8.18.3 | **Конфигурация коллекций** |  | 2d? | 2013-10-01 | 2013-10-03 | 87 |  |  | 98.25d | 0.25d |  |  | 12.8h |
| 101 | 1.4.4.14.8.18.3.1 | Типовая иерархия кастомных папок (3шт) |  | 1d | 2013-10-01 | 2013-10-02 |  |  |  | 98.25d | 0d |  | Глеб Ноздрачев [80%] | 6.4h |
| 102 | 1.4.4.14.8.18.3.2 | Системные настройки для ВнД |  | 1d? | 2013-10-02 | 2013-10-03 | 101 |  |  | 98.25d |  |  | Глеб Ноздрачев [80%] | 6.4h |
| 103 | 1.4.4.14.8.18.4 | Проверка работы |  | 1d? | 2013-10-14 | 2013-10-15 | 100, 95 |  |  | 96.25d |  |  | Глеб Ноздрачев [80%] | 6.4h |
| 104 | 1.4.4.14.8.19 | **Разработка адаптеров для Вн** |  | 12d | 2013-09-30 A | 2013-10-15 |  |  | 12d | 99d |  |  |  | 320h |
| 105 | 1.4.4.14.8.19.1 | Задание по View и Session поставлена | milestone | 0d | 2013-09-30 A | 2013-09-30 A |  | 100% |  |  |  | start no earlier than 2013-09-30 | Тугушев Илья [80%] |  |
| 106 | 1.4.4.14.8.19.2 | Адаптеры View, Session проектирование |  | 6d | 2013-09-30 | 2013-10-07 | 105 |  |  | 85.8d | 0d |  | (БТЛ) Олег Еренцов; (БТЛ)Сергей Степыгин | 96h |
| 107 | 1.4.4.14.8.19.3 | Разработка логики адаптеров view&session |  | 6d | 2013-10-08 | 2013-10-15 | 106 |  |  | 85.8d | 0d |  | (БТЛ) Олег Еренцов; (БТЛ)Сергей Степыгин | 96h |
| 108 | 1.4.4.14.8.19.4 | Разработка архитектуры дя адаптеров database |  | 5d | 2013-09-30 | 2013-10-04 | 105 |  |  | 99d | 0d |  | Тугушев Илья [80%] | 32h |
| 109 | 1.4.4.14.8.19.5 | Разработка адаптеров database |  | 5d | 2013-10-07 | 2013-10-11 | 108 |  |  | 101d |  |  | Александр Власюк | 40h |
| 110 | 1.4.4.14.8.19.6 | Задание по Database и Document поставлена | milestone | 0d | 2013-10-04 | 2013-10-04 | 105FS+5d |  |  | 99d | 0d |  | Тугушев Илья [80%] |  |
| 111 | 1.4.4.14.8.19.7 | Разработка адаптеров DOCUMENT |  | 7d | 2013-10-07 | 2013-10-15 | 108, 110 |  |  | 99d |  |  | Александр Власюк | 56h |
| 112 | 1.4.4.14.8.20 | **Разработка коллекций** |  | 10.2d | 2013-10-16 | 2013-10-30 | 107 |  |  | 85.8d |  |  |  | 144h |
| 113 | 1.4.4.14.8.20.1 | Коллекции Портала |  | 4d | 2013-10-16 | 2013-10-21 | 83 |  |  | 85.8d | 0d |  | Тугушев Илья [80%] | 25.6h |
| 114 | 1.4.4.14.8.20.2 | Инструктаж по @-формулам проведен | milestone | 0d | 2013-10-21 | 2013-10-21 | 113, 106 |  |  | 95d |  |  | Тугушев Илья [80%] |  |
| 115 | 1.4.4.14.8.20.3 | Коллекции СС |  | 3d | 2013-10-22 | 2013-10-24 | 113 |  |  | 85.8d | 0d |  | (БТЛ) Олег Еренцов | 24h |
| 116 | 1.4.4.14.8.20.4 | Коллекции Каталога |  | 3d | 2013-10-22 | 2013-10-24 | 113, 81 |  |  | 85.8d | 0d |  | (БТЛ) Дмитрий Лякин | 24h |
| 117 | 1.4.4.14.8.20.5 | Коллекции СО |  | 3d | 2013-10-22 | 2013-10-24 | 113, 85 |  |  | 89d | 3.2d |  | Тугушев Илья [80%] | 19.2h |
| 118 | 1.4.4.14.8.20.6 | Коллекции ВнД |  | 3.2d | 2013-10-25 | 2013-10-30 | 115 |  |  | 85.8d | 0d |  | (БТЛ) Олег Еренцов | 25.6h |
| 119 | 1.4.4.14.8.20.7 | Коллекции СпО |  | 3.2d | 2013-10-25 | 2013-10-30 | 116 |  |  | 85.8d | 0d |  | (БТЛ) Дмитрий Лякин | 25.6h |
| 120 | 1.4.4.14.8.21 | ВнД | milestone | 0d | 2013-10-30 | 2013-10-30 | 115, 80, 116, 82, 113, 84, 117, 86, 118, 88, 119, 90, 91, 92, 93, 94, 106 |  |  | 85.8d | 0d |  |  |  |
| 121 | 1.4.4.14.8.22 | Объединение War |  | 1d | 2013-10-30 | 2013-10-31 | 120 |  |  | 87.8d |  |  | Тугушев Илья | 8h |

Notes:
- 96: XSD-схема XML-настроек [NNN] 3дн (знать XML, XSD)
- 97: Чтение через спец-Mapper [NNN] 3дн (уметь работать с XML-парсером)
- 99: Получение коллекций платформы в соотв. с конфигурацией [MMM] (знать коллекции платформы)
- 102: Системные настройки для ВнД (1дескр + 10типов) [NNN] 1 дн
- 103: Х тестовых РКК ВнД [YYY] 2ч

| ID | WBS | Task | Type | Duration | Start | Finish | Predecessors | Total slack | Free slack | Constraint | Resources | Work |
| --- | --- | --- | --- | --- | --- | --- | --- | --- | --- | --- | --- | --- |
| 122 | 1.4.4.14.8.23 | **Инструмент заполнения** |  | 3d? | 2013-10-30 | 2013-11-04 | 120 | 85.8d |  |  |  |  |
| 123 | 1.4.4.14.8.23.1 | Инструмент заполнения Каталога |  | 3d? | 2013-10-30 | 2013-11-04 |  | 85.8d |  |  |  |  |
| 124 | 1.4.4.14.8.23.2 | Инструмент заполнения СС |  | 3d? | 2013-10-30 | 2013-11-04 |  | 85.8d |  |  |  |  |
| 125 | 1.4.4.14.8.23.3 | Инструмент заполнения Портала |  | 3d? | 2013-10-30 | 2013-11-04 |  | 85.8d |  |  |  |  |
| 126 | 1.4.4.14.8.23.4 | Инструмент заполнения СО |  | 3d? | 2013-10-30 | 2013-11-04 |  | 85.8d |  |  |  |  |
| 127 | 1.4.4.14.8.23.5 | Инструмент заполнения СпО |  | 3d? | 2013-10-30 | 2013-11-04 |  | 85.8d |  |  |  |  |
| 128 | 1.4.4.14.9 | **Интеграция с CMJ по сервису согласования** |  | 31d? | 2013-11-04 | 2013-12-17 | 76 | 116.8d |  |  |  | 214.88h |
| 129 | 1.4.4.14.9.1 | Конфиг ДОП |  | 6d | 2013-11-04 | 2013-11-12 |  | 116.8d | 0d |  | Глеб Ноздрачев [1%] | 0.48h |
| 130 | 1.4.4.14.9.2 | Mapper |  | 6d | 2013-11-12 | 2013-11-20 | 129 | 116.8d | 0d |  | Глеб Ноздрачев [80%] | 38.4h |
| 131 | 1.4.4.14.9.3 | **Настраиваемые коллекции** |  | 5d? | 2013-11-20 | 2013-11-27 | 130 | 130.8d | 14d |  |  | 32h |
| 132 | 1.4.4.14.9.3.1 | **Конфигурация коллекций** |  | 4d | 2013-11-20 | 2013-11-26 |  | 130.8d | 0d |  |  | 25.6h |
| 133 | 1.4.4.14.9.3.1.1 | Типовая иерархия кастомных папок (3шт) |  | 2d | 2013-11-20 | 2013-11-22 |  | 130.8d | 0d |  | Глеб Ноздрачев [80%] | 12.8h |
| 134 | 1.4.4.14.9.3.1.2 | Системные настройки для СрвСогл |  | 2d | 2013-11-22 | 2013-11-26 | 133 | 130.8d |  |  | Глеб Ноздрачев [80%] | 12.8h |
| 135 | 1.4.4.14.9.3.2 | Проверка работы |  | 1d? | 2013-11-26 | 2013-11-27 | 132 | 130.8d |  |  | Глеб Ноздрачев [80%] | 6.4h |
| 136 | 1.4.4.14.9.4 | **Разработка адаптеров для СрвСогл** |  | 10d | 2013-11-20 | 2013-12-04 | 130 | 116.8d | 0d |  |  | 72h |
| 137 | 1.4.4.14.9.4.1 | Задание поставлено | milestone | 0d | 2013-11-20 | 2013-11-20 |  | 116.8d | 0d | start no earlier than 2013-09-30 | Тугушев Илья [80%] |  |
| 138 | 1.4.4.14.9.4.2 | Разработка архитектуры дя адаптеров |  | 5d | 2013-11-20 | 2013-11-27 | 137 | 116.8d | 0d |  | Тугушев Илья [80%] | 32h |
| 139 | 1.4.4.14.9.4.3 | Разработка адаптеров |  | 5d | 2013-11-27 | 2013-12-04 | 138 | 116.8d |  |  | Александр Власюк | 40h |
| 140 | 1.4.4.14.9.5 | **Разработка коллекций** |  | 9d | 2013-12-04 | 2013-12-17 | 136 | 116.8d |  |  |  | 72h |
| 141 | 1.4.4.14.9.5.1 | Коллекции |  | 9d | 2013-12-04 | 2013-12-17 |  | 116.8d | 0d |  | (БТЛ) Олег Еренцов | 72h |
| 142 | 1.4.4.14.9.6 | Интеграция по СрвСогл выполнена | milestone | 0d | 2013-12-17 | 2013-12-17 | 130, 131, 141 | 116.8d |  |  |  |  |
| 143 | 1.4.4.14.10 | **Интеграция с CMJ по Входящим документам** |  | 31d? | 2013-11-04 | 2013-12-17 | 76 | 85.8d | 0d |  |  | 214.88h |
| 144 | 1.4.4.14.10.1 | Конфиг ДОП |  | 6d | 2013-11-04 | 2013-11-12 |  | 85.8d | 0d |  | Глеб Ноздрачев [1%] | 0.48h |
| 145 | 1.4.4.14.10.2 | Mapper |  | 6d | 2013-11-12 | 2013-11-20 | 144 | 85.8d | 0d |  | Глеб Ноздрачев [80%] | 38.4h |

Notes:
- 134: Системные настройки для ВнД (1дескр + 10типов) [NNN] 1 дн
- 135: Х тестовых РКК ВнД [YYY] 2ч

| ID | WBS | Task | Type | Duration | Start | Finish | Predecessors | Total slack | Free slack | Constraint | Resources | Work |
| --- | --- | --- | --- | --- | --- | --- | --- | --- | --- | --- | --- | --- |
| 146 | 1.4.4.14.10.3 | **Настраиваемые коллекции** |  | 5d? | 2013-11-20 | 2013-11-27 | 145 | 99.8d | 14d |  |  | 32h |
| 147 | 1.4.4.14.10.3.1 | **Конфигурация коллекций** |  | 4d | 2013-11-20 | 2013-11-26 |  | 99.8d | 0d |  |  | 25.6h |
| 148 | 1.4.4.14.10.3.1.1 | Типовая иерархия кастомных папок (3шт) |  | 2d | 2013-11-20 | 2013-11-22 |  | 99.8d | 0d |  | Глеб Ноздрачев [80%] | 12.8h |
| 149 | 1.4.4.14.10.3.1.2 | Системные настройки для Вх |  | 2d | 2013-11-22 | 2013-11-26 | 148 | 99.8d |  |  | Глеб Ноздрачев [80%] | 12.8h |
| 150 | 1.4.4.14.10.3.2 | Проверка работы |  | 1d? | 2013-11-26 | 2013-11-27 | 147 | 99.8d |  |  | Глеб Ноздрачев [80%] | 6.4h |
| 151 | 1.4.4.14.10.4 | **Разработка адаптеров для Вх** |  | 10d | 2013-11-20 | 2013-12-04 | 145 | 85.8d | 0d |  |  | 72h |
| 152 | 1.4.4.14.10.4.1 | Задание поставлено | milestone | 0d | 2013-11-20 | 2013-11-20 |  | 85.8d | 0d | start no earlier than 2013-09-30 | Тугушев Илья [80%] |  |
| 153 | 1.4.4.14.10.4.2 | Разработка архитектуры дя адаптеров |  | 5d | 2013-11-20 | 2013-11-27 | 152 | 85.8d | 0d |  | Тугушев Илья [80%] | 32h |
| 154 | 1.4.4.14.10.4.3 | Разработка адаптеров |  | 5d | 2013-11-27 | 2013-12-04 | 153 | 85.8d |  |  | Александр Власюк | 40h |
| 155 | 1.4.4.14.10.5 | **Разработка коллекций** |  | 9d | 2013-12-04 | 2013-12-17 | 151 | 85.8d |  |  |  | 72h |
| 156 | 1.4.4.14.10.5.1 | Коллекции |  | 9d | 2013-12-04 | 2013-12-17 |  | 85.8d | 0d |  | (БТЛ) Олег Еренцов | 72h |
| 157 | 1.4.4.14.10.6 | Интеграция по Вх выполнена | milestone | 0d | 2013-12-17 | 2013-12-17 | 145, 146, 156 | 85.8d |  |  |  |  |
| 158 | 1.4.4.14.11 | **Интеграция с CMJ по ОРД** |  | 31d? | 2013-11-04 | 2013-12-17 | 76 | 85.8d | 0d |  |  | 214.88h |
| 159 | 1.4.4.14.11.1 | Конфиг ДОП |  | 6d | 2013-11-04 | 2013-11-12 |  | 85.8d | 0d |  | Глеб Ноздрачев [1%] | 0.48h |
| 160 | 1.4.4.14.11.2 | Mapper |  | 6d | 2013-11-12 | 2013-11-20 | 159 | 85.8d | 0d |  | Глеб Ноздрачев [80%] | 38.4h |
| 161 | 1.4.4.14.11.3 | **Настраиваемые коллекции** |  | 5d? | 2013-11-20 | 2013-11-27 | 160 | 99.8d | 14d |  |  | 32h |
| 162 | 1.4.4.14.11.3.1 | **Конфигурация коллекций** |  | 4d | 2013-11-20 | 2013-11-26 |  | 99.8d | 0d |  |  | 25.6h |
| 163 | 1.4.4.14.11.3.1.1 | Типовая иерархия кастомных папок (3шт) |  | 2d | 2013-11-20 | 2013-11-22 |  | 99.8d | 0d |  | Глеб Ноздрачев [80%] | 12.8h |
| 164 | 1.4.4.14.11.3.1.2 | Системные настройки для ОРД |  | 2d | 2013-11-22 | 2013-11-26 | 163 | 99.8d |  |  | Глеб Ноздрачев [80%] | 12.8h |
| 165 | 1.4.4.14.11.3.2 | Проверка работы |  | 1d? | 2013-11-26 | 2013-11-27 | 162 | 99.8d |  |  | Глеб Ноздрачев [80%] | 6.4h |
| 166 | 1.4.4.14.11.4 | **Разработка адаптеров для ОРД** |  | 10d | 2013-11-20 | 2013-12-04 | 160 | 85.8d | 0d |  |  | 72h |
| 167 | 1.4.4.14.11.4.1 | Задание поставлено | milestone | 0d | 2013-11-20 | 2013-11-20 |  | 85.8d | 0d | start no earlier than 2013-09-30 | Тугушев Илья [80%] |  |
| 168 | 1.4.4.14.11.4.2 | Разработка архитектуры дя адаптеров |  | 5d | 2013-11-20 | 2013-11-27 | 167 | 85.8d | 0d |  | Тугушев Илья [80%] | 32h |
| 169 | 1.4.4.14.11.4.3 | Разработка адаптеров |  | 5d | 2013-11-27 | 2013-12-04 | 168 | 85.8d |  |  | Александр Власюк | 40h |

Notes:
- 149: Системные настройки для ВнД (1дескр + 10типов) [NNN] 1 дн
- 150: Х тестовых РКК ВнД [YYY] 2ч
- 164: Системные настройки для ВнД (1дескр + 10типов) [NNN] 1 дн
- 165: Х тестовых РКК ВнД [YYY] 2ч

| ID | WBS | Task | Type | Duration | Start | Finish | Predecessors | Total slack | Free slack | Constraint | Resources | Work |
| --- | --- | --- | --- | --- | --- | --- | --- | --- | --- | --- | --- | --- |
| 170 | 1.4.4.14.11.5 | **Разработка коллекций** |  | 9d | 2013-12-04 | 2013-12-17 | 166 | 85.8d |  |  |  | 72h |
| 171 | 1.4.4.14.11.5.1 | Коллекции |  | 9d | 2013-12-04 | 2013-12-17 |  | 85.8d | 0d |  | (БТЛ) Олег Еренцов | 72h |
| 172 | 1.4.4.14.11.6 | Интеграция по ОРД выполнена | milestone | 0d | 2013-12-17 | 2013-12-17 | 160, 161, 171 | 85.8d |  |  |  |  |
| 173 | 1.4.4.14.12 | **Интеграция с CMJ по Исходящие документам** |  | 31d? | 2013-12-17 | 2014-02-10 | 143, 158 | 85.8d |  |  |  | 214.88h |
| 174 | 1.4.4.14.12.1 | Конфиг ДОП |  | 6d | 2013-12-17 | 2013-12-25 |  | 85.8d | 0d |  | Глеб Ноздрачев [1%] | 0.48h |
| 175 | 1.4.4.14.12.2 | Mapper |  | 6d | 2013-12-25 | 2014-01-14 | 174 | 85.8d | 0d |  | Глеб Ноздрачев [80%] | 38.4h |
| 176 | 1.4.4.14.12.3 | **Настраиваемые коллекции** |  | 5d? | 2014-01-14 | 2014-01-21 | 175 | 99.8d | 14d |  |  | 32h |
| 177 | 1.4.4.14.12.3.1 | **Конфигурация коллекций** |  | 4d | 2014-01-14 | 2014-01-20 |  | 99.8d | 0d |  |  | 25.6h |
| 178 | 1.4.4.14.12.3.1.1 | Типовая иерархия кастомных папок (3шт) |  | 2d | 2014-01-14 | 2014-01-16 |  | 99.8d | 0d |  | Глеб Ноздрачев [80%] | 12.8h |
| 179 | 1.4.4.14.12.3.1.2 | Системные настройки для Исх |  | 2d | 2014-01-16 | 2014-01-20 | 178 | 99.8d |  |  | Глеб Ноздрачев [80%] | 12.8h |
| 180 | 1.4.4.14.12.3.2 | Проверка работы |  | 1d? | 2014-01-20 | 2014-01-21 | 177 | 99.8d |  |  | Глеб Ноздрачев [80%] | 6.4h |
| 181 | 1.4.4.14.12.4 | **Разработка адаптеров для Исх** |  | 10d | 2014-01-14 | 2014-01-28 | 175 | 85.8d | 0d |  |  | 72h |
| 182 | 1.4.4.14.12.4.1 | Задание поставлено | milestone | 0d | 2014-01-14 | 2014-01-14 |  | 85.8d | 0d | start no earlier than 2013-09-30 | Тугушев Илья [80%] |  |
| 183 | 1.4.4.14.12.4.2 | Разработка архитектуры дя адаптеров |  | 5d | 2014-01-14 | 2014-01-21 | 182 | 85.8d | 0d |  | Тугушев Илья [80%] | 32h |
| 184 | 1.4.4.14.12.4.3 | Разработка адаптеров |  | 5d | 2014-01-21 | 2014-01-28 | 183 | 85.8d |  |  | Александр Власюк | 40h |
| 185 | 1.4.4.14.12.5 | **Разработка коллекций** |  | 9d | 2014-01-28 | 2014-02-10 | 181 | 85.8d |  |  |  | 72h |
| 186 | 1.4.4.14.12.5.1 | Коллекции |  | 9d | 2014-01-28 | 2014-02-10 |  | 85.8d | 0d |  | (БТЛ) Олег Еренцов | 72h |
| 187 | 1.4.4.14.12.6 | Интеграция по Исх выполнена | milestone | 0d | 2014-02-10 | 2014-02-10 | 175, 176, 186 | 85.8d |  |  |  |  |
| 188 | 1.4.4.14.13 | **Интеграция с CMJ по самостоятельным поручениям** |  | 31d? | 2013-11-04 | 2013-12-17 | 76 | 116.8d |  |  |  | 214.88h |
| 189 | 1.4.4.14.13.1 | Конфиг ДОП |  | 6d | 2013-11-04 | 2013-11-12 |  | 116.8d | 0d |  | Глеб Ноздрачев [1%] | 0.48h |
| 190 | 1.4.4.14.13.2 | Mapper |  | 6d | 2013-11-12 | 2013-11-20 | 189 | 116.8d | 0d |  | Глеб Ноздрачев [80%] | 38.4h |
| 191 | 1.4.4.14.13.3 | **Настраиваемые коллекции** |  | 5d? | 2013-11-20 | 2013-11-27 | 190 | 130.8d | 14d |  |  | 32h |
| 192 | 1.4.4.14.13.3.1 | **Конфигурация коллекций** |  | 4d | 2013-11-20 | 2013-11-26 |  | 130.8d | 0d |  |  | 25.6h |
| 193 | 1.4.4.14.13.3.1.1 | Типовая иерархия кастомных папок (3шт) |  | 2d | 2013-11-20 | 2013-11-22 |  | 130.8d | 0d |  | Глеб Ноздрачев [80%] | 12.8h |
| 194 | 1.4.4.14.13.3.1.2 | Системные настройки для Поручений |  | 2d | 2013-11-22 | 2013-11-26 | 193 | 130.8d |  |  | Глеб Ноздрачев [80%] | 12.8h |
| 195 | 1.4.4.14.13.3.2 | Проверка работы |  | 1d? | 2013-11-26 | 2013-11-27 | 192 | 130.8d |  |  | Глеб Ноздрачев [80%] | 6.4h |

Notes:
- 179: Системные настройки для ВнД (1дескр + 10типов) [NNN] 1 дн
- 180: Х тестовых РКК ВнД [YYY] 2ч
- 194: Системные настройки для ВнД (1дескр + 10типов) [NNN] 1 дн
- 195: Х тестовых РКК ВнД [YYY] 2ч

| ID | WBS | Task | Type | Duration | Start | Finish | Predecessors | Total slack | Free slack | Constraint | Resources | Work |
| --- | --- | --- | --- | --- | --- | --- | --- | --- | --- | --- | --- | --- |
| 196 | 1.4.4.14.13.4 | **Разработка адаптеров для Поручений** |  | 10d | 2013-11-20 | 2013-12-04 | 190 | 116.8d | 0d |  |  | 72h |
| 197 | 1.4.4.14.13.4.1 | Задание поставлено | milestone | 0d | 2013-11-20 | 2013-11-20 |  | 116.8d | 0d | start no earlier than 2013-09-30 | Тугушев Илья [80%] |  |
| 198 | 1.4.4.14.13.4.2 | Разработка архитектуры дя адаптеров |  | 5d | 2013-11-20 | 2013-11-27 | 197 | 116.8d | 0d |  | Тугушев Илья [80%] | 32h |
| 199 | 1.4.4.14.13.4.3 | Разработка адаптеров |  | 5d | 2013-11-27 | 2013-12-04 | 198 | 116.8d |  |  | Александр Власюк | 40h |
| 200 | 1.4.4.14.13.5 | **Разработка коллекций** |  | 9d | 2013-12-04 | 2013-12-17 | 196 | 116.8d |  |  |  | 72h |
| 201 | 1.4.4.14.13.5.1 | Коллекции |  | 9d | 2013-12-04 | 2013-12-17 |  | 116.8d | 0d |  | (БТЛ) Олег Еренцов | 72h |
| 202 | 1.4.4.14.13.6 | Интеграция по Поручений выполнена | milestone | 0d | 2013-12-17 | 2013-12-17 | 190, 191, 201 | 116.8d |  |  |  |  |
| 203 | 1.4.4.14.14 | **Интеграция с CMJ по ОГ** |  | 31d? | 2013-11-04 | 2013-12-17 | 76 | 116.8d |  |  |  | 214.88h |
| 204 | 1.4.4.14.14.1 | Конфиг ДОП |  | 6d | 2013-11-04 | 2013-11-12 |  | 116.8d | 0d |  | Глеб Ноздрачев [1%] | 0.48h |
| 205 | 1.4.4.14.14.2 | Mapper |  | 6d | 2013-11-12 | 2013-11-20 | 204 | 116.8d | 0d |  | Глеб Ноздрачев [80%] | 38.4h |
| 206 | 1.4.4.14.14.3 | **Настраиваемые коллекции** |  | 5d? | 2013-11-20 | 2013-11-27 | 205 | 130.8d | 14d |  |  | 32h |
| 207 | 1.4.4.14.14.3.1 | **Конфигурация коллекций** |  | 4d | 2013-11-20 | 2013-11-26 |  | 130.8d | 0d |  |  | 25.6h |
| 208 | 1.4.4.14.14.3.1.1 | Типовая иерархия кастомных папок (3шт) |  | 2d | 2013-11-20 | 2013-11-22 |  | 130.8d | 0d |  | Глеб Ноздрачев [80%] | 12.8h |
| 209 | 1.4.4.14.14.3.1.2 | Системные настройки для ОГ |  | 2d | 2013-11-22 | 2013-11-26 | 208 | 130.8d |  |  | Глеб Ноздрачев [80%] | 12.8h |
| 210 | 1.4.4.14.14.3.2 | Проверка работы |  | 1d? | 2013-11-26 | 2013-11-27 | 207 | 130.8d |  |  | Глеб Ноздрачев [80%] | 6.4h |
| 211 | 1.4.4.14.14.4 | **Разработка адаптеров для ОГ** |  | 10d | 2013-11-20 | 2013-12-04 | 205 | 116.8d | 0d |  |  | 72h |
| 212 | 1.4.4.14.14.4.1 | Задание поставлено | milestone | 0d | 2013-11-20 | 2013-11-20 |  | 116.8d | 0d | start no earlier than 2013-09-30 | Тугушев Илья [80%] |  |
| 213 | 1.4.4.14.14.4.2 | Разработка архитектуры дя адаптеров |  | 5d | 2013-11-20 | 2013-11-27 | 212 | 116.8d | 0d |  | Тугушев Илья [80%] | 32h |
| 214 | 1.4.4.14.14.4.3 | Разработка адаптеров |  | 5d | 2013-11-27 | 2013-12-04 | 213 | 116.8d |  |  | Александр Власюк | 40h |
| 215 | 1.4.4.14.14.5 | **Разработка коллекций** |  | 9d | 2013-12-04 | 2013-12-17 | 211 | 116.8d |  |  |  | 72h |
| 216 | 1.4.4.14.14.5.1 | Коллекции |  | 9d | 2013-12-04 | 2013-12-17 |  | 116.8d | 0d |  | (БТЛ) Олег Еренцов | 72h |
| 217 | 1.4.4.14.14.6 | Интеграция по ОГ выполнена | milestone | 0d | 2013-12-17 | 2013-12-17 | 205, 206, 216 | 116.8d |  |  |  |  |
| 218 | 1.4.4.14.15 | **Интеграция с CMJ по "Кейсам"** |  | 31d? | 2013-11-04 | 2013-12-17 | 76 | 116.8d |  |  |  | 214.88h |
| 219 | 1.4.4.14.15.1 | Конфиг ДОП |  | 6d | 2013-11-04 | 2013-11-12 |  | 116.8d | 0d |  | Глеб Ноздрачев [1%] | 0.48h |
| 220 | 1.4.4.14.15.2 | Mapper |  | 6d | 2013-11-12 | 2013-11-20 | 219 | 116.8d | 0d |  | Глеб Ноздрачев [80%] | 38.4h |

Notes:
- 209: Системные настройки для ВнД (1дескр + 10типов) [NNN] 1 дн
- 210: Х тестовых РКК ВнД [YYY] 2ч

| ID | WBS | Task | Type | Duration | Start | Finish | Predecessors | Total slack | Free slack | Constraint | Resources | Work |
| --- | --- | --- | --- | --- | --- | --- | --- | --- | --- | --- | --- | --- |
| 221 | 1.4.4.14.15.3 | **Настраиваемые коллекции** |  | 5d? | 2013-11-20 | 2013-11-27 | 220 | 130.8d | 14d |  |  | 32h |
| 222 | 1.4.4.14.15.3.1 | **Конфигурация коллекций** |  | 4d | 2013-11-20 | 2013-11-26 |  | 130.8d | 0d |  |  | 25.6h |
| 223 | 1.4.4.14.15.3.1.1 | Типовая иерархия кастомных папок (3шт) |  | 2d | 2013-11-20 | 2013-11-22 |  | 130.8d | 0d |  | Глеб Ноздрачев [80%] | 12.8h |
| 224 | 1.4.4.14.15.3.1.2 | Системные настройки для Кейс |  | 2d | 2013-11-22 | 2013-11-26 | 223 | 130.8d |  |  | Глеб Ноздрачев [80%] | 12.8h |
| 225 | 1.4.4.14.15.3.2 | Проверка работы |  | 1d? | 2013-11-26 | 2013-11-27 | 222 | 130.8d |  |  | Глеб Ноздрачев [80%] | 6.4h |
| 226 | 1.4.4.14.15.4 | **Разработка адаптеров для Кейс** |  | 10d | 2013-11-20 | 2013-12-04 | 220 | 116.8d | 0d |  |  | 72h |
| 227 | 1.4.4.14.15.4.1 | Задание поставлено | milestone | 0d | 2013-11-20 | 2013-11-20 |  | 116.8d | 0d | start no earlier than 2013-09-30 | Тугушев Илья [80%] |  |
| 228 | 1.4.4.14.15.4.2 | Разработка архитектуры дя адаптеров |  | 5d | 2013-11-20 | 2013-11-27 | 227 | 116.8d | 0d |  | Тугушев Илья [80%] | 32h |
| 229 | 1.4.4.14.15.4.3 | Разработка адаптеров |  | 5d | 2013-11-27 | 2013-12-04 | 228 | 116.8d |  |  | Александр Власюк | 40h |
| 230 | 1.4.4.14.15.5 | **Разработка коллекций** |  | 9d | 2013-12-04 | 2013-12-17 | 226 | 116.8d |  |  |  | 72h |
| 231 | 1.4.4.14.15.5.1 | Коллекции |  | 9d | 2013-12-04 | 2013-12-17 |  | 116.8d | 0d |  | (БТЛ) Олег Еренцов | 72h |
| 232 | 1.4.4.14.15.6 | Интеграция по Кейс выполнена | milestone | 0d | 2013-12-17 | 2013-12-17 | 220, 221, 231 | 116.8d |  |  |  |  |
| 233 | 1.4.4.14.16 | **Интеграция с CMJ по Договорам** |  | 31d? | 2013-11-04 | 2013-12-17 | 76 | 116.8d |  |  |  | 214.88h |
| 234 | 1.4.4.14.16.1 | Конфиг ДОП |  | 6d | 2013-11-04 | 2013-11-12 |  | 116.8d | 0d |  | Глеб Ноздрачев [1%] | 0.48h |
| 235 | 1.4.4.14.16.2 | Mapper |  | 6d | 2013-11-12 | 2013-11-20 | 234 | 116.8d | 0d |  | Глеб Ноздрачев [80%] | 38.4h |
| 236 | 1.4.4.14.16.3 | **Настраиваемые коллекции** |  | 5d? | 2013-11-20 | 2013-11-27 | 235 | 130.8d | 14d |  |  | 32h |
| 237 | 1.4.4.14.16.3.1 | **Конфигурация коллекций** |  | 4d | 2013-11-20 | 2013-11-26 |  | 130.8d | 0d |  |  | 25.6h |
| 238 | 1.4.4.14.16.3.1.1 | Типовая иерархия кастомных папок (3шт) |  | 2d | 2013-11-20 | 2013-11-22 |  | 130.8d | 0d |  | Глеб Ноздрачев [80%] | 12.8h |
| 239 | 1.4.4.14.16.3.1.2 | Системные настройки для Дгв |  | 2d | 2013-11-22 | 2013-11-26 | 238 | 130.8d |  |  | Глеб Ноздрачев [80%] | 12.8h |
| 240 | 1.4.4.14.16.3.2 | Проверка работы |  | 1d? | 2013-11-26 | 2013-11-27 | 237 | 130.8d |  |  | Глеб Ноздрачев [80%] | 6.4h |
| 241 | 1.4.4.14.16.4 | **Разработка адаптеров для Дгв** |  | 10d | 2013-11-20 | 2013-12-04 | 235 | 116.8d | 0d |  |  | 72h |
| 242 | 1.4.4.14.16.4.1 | Задание поставлено | milestone | 0d | 2013-11-20 | 2013-11-20 |  | 116.8d | 0d | start no earlier than 2013-09-30 | Тугушев Илья [80%] |  |
| 243 | 1.4.4.14.16.4.2 | Разработка архитектуры дя адаптеров |  | 5d | 2013-11-20 | 2013-11-27 | 242 | 116.8d | 0d |  | Тугушев Илья [80%] | 32h |
| 244 | 1.4.4.14.16.4.3 | Разработка адаптеров |  | 5d | 2013-11-27 | 2013-12-04 | 243 | 116.8d |  |  | Александр Власюк | 40h |

Notes:
- 224: Системные настройки для ВнД (1дескр + 10типов) [NNN] 1 дн
- 225: Х тестовых РКК ВнД [YYY] 2ч
- 239: Системные настройки для ВнД (1дескр + 10типов) [NNN] 1 дн
- 240: Х тестовых РКК ВнД [YYY] 2ч

| ID | WBS | Task | Type | Duration | Start | Finish | Predecessors | Total slack | Free slack | Constraint | Resources | Work |
| --- | --- | --- | --- | --- | --- | --- | --- | --- | --- | --- | --- | --- |
| 245 | 1.4.4.14.16.5 | **Разработка коллекций** |  | 9d | 2013-12-04 | 2013-12-17 | 241 | 116.8d |  |  |  | 72h |
| 246 | 1.4.4.14.16.5.1 | Коллекции |  | 9d | 2013-12-04 | 2013-12-17 |  | 116.8d | 0d |  | (БТЛ) Олег Еренцов | 72h |
| 247 | 1.4.4.14.16.6 | Интеграция по Дгв выполнена | milestone | 0d | 2013-12-17 | 2013-12-17 | 235, 236, 246 | 116.8d |  |  |  |  |
| 248 | 1.4.4.14.17 | **Интеграция с CMJ по Заседаниям** |  | 31d? | 2013-11-04 | 2013-12-17 | 76 | 116.8d |  |  |  | 214.88h |
| 249 | 1.4.4.14.17.1 | Конфиг ДОП |  | 6d | 2013-11-04 | 2013-11-12 |  | 116.8d | 0d |  | Глеб Ноздрачев [1%] | 0.48h |
| 250 | 1.4.4.14.17.2 | Mapper |  | 6d | 2013-11-12 | 2013-11-20 | 249 | 116.8d | 0d |  | Глеб Ноздрачев [80%] | 38.4h |
| 251 | 1.4.4.14.17.3 | **Настраиваемые коллекции** |  | 5d? | 2013-11-20 | 2013-11-27 | 250 | 130.8d | 14d |  |  | 32h |
| 252 | 1.4.4.14.17.3.1 | **Конфигурация коллекций** |  | 4d | 2013-11-20 | 2013-11-26 |  | 130.8d | 0d |  |  | 25.6h |
| 253 | 1.4.4.14.17.3.1.1 | Типовая иерархия кастомных папок (3шт) |  | 2d | 2013-11-20 | 2013-11-22 |  | 130.8d | 0d |  | Глеб Ноздрачев [80%] | 12.8h |
| 254 | 1.4.4.14.17.3.1.2 | Системные настройки для Зсд |  | 2d | 2013-11-22 | 2013-11-26 | 253 | 130.8d |  |  | Глеб Ноздрачев [80%] | 12.8h |
| 255 | 1.4.4.14.17.3.2 | Проверка работы |  | 1d? | 2013-11-26 | 2013-11-27 | 252 | 130.8d |  |  | Глеб Ноздрачев [80%] | 6.4h |
| 256 | 1.4.4.14.17.4 | **Разработка адаптеров для Зсд** |  | 10d | 2013-11-20 | 2013-12-04 | 250 | 116.8d | 0d |  |  | 72h |
| 257 | 1.4.4.14.17.4.1 | Задание поставлено | milestone | 0d | 2013-11-20 | 2013-11-20 |  | 116.8d | 0d | start no earlier than 2013-09-30 | Тугушев Илья [80%] |  |
| 258 | 1.4.4.14.17.4.2 | Разработка архитектуры дя адаптеров |  | 5d | 2013-11-20 | 2013-11-27 | 257 | 116.8d | 0d |  | Тугушев Илья [80%] | 32h |
| 259 | 1.4.4.14.17.4.3 | Разработка адаптеров |  | 5d | 2013-11-27 | 2013-12-04 | 258 | 116.8d |  |  | Александр Власюк | 40h |
| 260 | 1.4.4.14.17.5 | **Разработка коллекций** |  | 9d | 2013-12-04 | 2013-12-17 | 256 | 116.8d |  |  |  | 72h |
| 261 | 1.4.4.14.17.5.1 | Коллекции |  | 9d | 2013-12-04 | 2013-12-17 |  | 116.8d | 0d |  | (БТЛ) Олег Еренцов | 72h |
| 262 | 1.4.4.14.17.6 | Интеграция по Зсд выполнена | milestone | 0d | 2013-12-17 | 2013-12-17 | 250, 251, 261 | 116.8d |  |  |  |  |
| 263 | 1.4.4.14.18 | **Интеграция с CMJ по Обсуждениям и ознакомлениям** |  | 31d? | 2013-11-04 | 2013-12-17 | 76 | 116.8d |  |  |  | 214.88h |
| 264 | 1.4.4.14.18.1 | Конфиг ДОП |  | 6d | 2013-11-04 | 2013-11-12 |  | 116.8d | 0d |  | Глеб Ноздрачев [1%] | 0.48h |
| 265 | 1.4.4.14.18.2 | Mapper |  | 6d | 2013-11-12 | 2013-11-20 | 264 | 116.8d | 0d |  | Глеб Ноздрачев [80%] | 38.4h |
| 266 | 1.4.4.14.18.3 | **Настраиваемые коллекции** |  | 5d? | 2013-11-20 | 2013-11-27 | 265 | 130.8d | 14d |  |  | 32h |
| 267 | 1.4.4.14.18.3.1 | **Конфигурация коллекций** |  | 4d | 2013-11-20 | 2013-11-26 |  | 130.8d | 0d |  |  | 25.6h |
| 268 | 1.4.4.14.18.3.1.1 | Типовая иерархия кастомных папок (3шт) |  | 2d | 2013-11-20 | 2013-11-22 |  | 130.8d | 0d |  | Глеб Ноздрачев [80%] | 12.8h |
| 269 | 1.4.4.14.18.3.1.2 | Системные настройки для ОО |  | 2d | 2013-11-22 | 2013-11-26 | 268 | 130.8d |  |  | Глеб Ноздрачев [80%] | 12.8h |
| 270 | 1.4.4.14.18.3.2 | Проверка работы |  | 1d? | 2013-11-26 | 2013-11-27 | 267 | 130.8d |  |  | Глеб Ноздрачев [80%] | 6.4h |

Notes:
- 254: Системные настройки для ВнД (1дескр + 10типов) [NNN] 1 дн
- 255: Х тестовых РКК ВнД [YYY] 2ч
- 269: Системные настройки для ВнД (1дескр + 10типов) [NNN] 1 дн
- 270: Х тестовых РКК ВнД [YYY] 2ч

| ID | WBS | Task | Type | Duration | Start | Finish | Predecessors | Total slack | Free slack | Constraint | Resources | Work |
| --- | --- | --- | --- | --- | --- | --- | --- | --- | --- | --- | --- | --- |
| 271 | 1.4.4.14.18.4 | **Разработка адаптеров для ОО** |  | 10d | 2013-11-20 | 2013-12-04 | 265 | 116.8d | 0d |  |  | 72h |
| 272 | 1.4.4.14.18.4.1 | Задание поставлено | milestone | 0d | 2013-11-20 | 2013-11-20 |  | 116.8d | 0d | start no earlier than 2013-09-30 | Тугушев Илья [80%] |  |
| 273 | 1.4.4.14.18.4.2 | Разработка архитектуры дя адаптеров |  | 5d | 2013-11-20 | 2013-11-27 | 272 | 116.8d | 0d |  | Тугушев Илья [80%] | 32h |
| 274 | 1.4.4.14.18.4.3 | Разработка адаптеров |  | 5d | 2013-11-27 | 2013-12-04 | 273 | 116.8d |  |  | Александр Власюк | 40h |
| 275 | 1.4.4.14.18.5 | **Разработка коллекций** |  | 9d | 2013-12-04 | 2013-12-17 | 271 | 116.8d |  |  |  | 72h |
| 276 | 1.4.4.14.18.5.1 | Коллекции |  | 9d | 2013-12-04 | 2013-12-17 |  | 116.8d | 0d |  | (БТЛ) Олег Еренцов | 72h |
| 277 | 1.4.4.14.18.6 | Интеграция по ОО выполнена | milestone | 0d | 2013-12-17 | 2013-12-17 | 265, 266, 276 | 116.8d |  |  |  |  |
| 278 | 1.4.4.14.19 | **Интеграция с CMJ по Формированию дел** |  | 31d? | 2013-11-04 | 2013-12-17 | 76 | 116.8d |  |  |  | 214.88h |
| 279 | 1.4.4.14.19.1 | Конфиг ДОП |  | 6d | 2013-11-04 | 2013-11-12 |  | 116.8d | 0d |  | Глеб Ноздрачев [1%] | 0.48h |
| 280 | 1.4.4.14.19.2 | Mapper |  | 6d | 2013-11-12 | 2013-11-20 | 279 | 116.8d | 0d |  | Глеб Ноздрачев [80%] | 38.4h |
| 281 | 1.4.4.14.19.3 | **Настраиваемые коллекции** |  | 5d? | 2013-11-20 | 2013-11-27 | 280 | 130.8d | 14d |  |  | 32h |
| 282 | 1.4.4.14.19.3.1 | **Конфигурация коллекций** |  | 4d | 2013-11-20 | 2013-11-26 |  | 130.8d | 0d |  |  | 25.6h |
| 283 | 1.4.4.14.19.3.1.1 | Типовая иерархия кастомных папок (3шт) |  | 2d | 2013-11-20 | 2013-11-22 |  | 130.8d | 0d |  | Глеб Ноздрачев [80%] | 12.8h |
| 284 | 1.4.4.14.19.3.1.2 | Системные настройки для ФД |  | 2d | 2013-11-22 | 2013-11-26 | 283 | 130.8d |  |  | Глеб Ноздрачев [80%] | 12.8h |
| 285 | 1.4.4.14.19.3.2 | Проверка работы |  | 1d? | 2013-11-26 | 2013-11-27 | 282 | 130.8d |  |  | Глеб Ноздрачев [80%] | 6.4h |
| 286 | 1.4.4.14.19.4 | **Разработка адаптеров для ФД** |  | 10d | 2013-11-20 | 2013-12-04 | 280 | 116.8d | 0d |  |  | 72h |
| 287 | 1.4.4.14.19.4.1 | Задание поставлено | milestone | 0d | 2013-11-20 | 2013-11-20 |  | 116.8d | 0d | start no earlier than 2013-09-30 | Тугушев Илья [80%] |  |
| 288 | 1.4.4.14.19.4.2 | Разработка архитектуры дя адаптеров |  | 5d | 2013-11-20 | 2013-11-27 | 287 | 116.8d | 0d |  | Тугушев Илья [80%] | 32h |
| 289 | 1.4.4.14.19.4.3 | Разработка адаптеров |  | 5d | 2013-11-27 | 2013-12-04 | 288 | 116.8d |  |  | Александр Власюк | 40h |
| 290 | 1.4.4.14.19.5 | **Разработка коллекций** |  | 9d | 2013-12-04 | 2013-12-17 | 286 | 116.8d |  |  |  | 72h |
| 291 | 1.4.4.14.19.5.1 | Коллекции |  | 9d | 2013-12-04 | 2013-12-17 |  | 116.8d | 0d |  | (БТЛ) Олег Еренцов | 72h |
| 292 | 1.4.4.14.19.6 | Интеграция по ФД выполнена | milestone | 0d | 2013-12-17 | 2013-12-17 | 280, 281, 291 | 116.8d |  |  |  |  |
| 293 | 1.4.4.14.20 | Основные коннеторы реализованы | milestone | 0d | 2013-12-09 | 2013-12-09 |  | 98d | 0d | start no earlier than 2013-12-09 |  |  |
| 294 | 1.4.4.14.21 | REST-протокол для АРМа - проектирование |  | 3d | 2013-06-25 | 2013-06-27 | 31 | 239d |  |  | Тугушев Илья; Денис Митавский [20%]; Андрей Пирожков [20%] | 33.6h |

Notes:
- 284: Системные настройки для ВнД (1дескр + 10типов) [NNN] 1 дн
- 285: Х тестовых РКК ВнД [YYY] 2ч

| ID | WBS | Task | Type | Duration | Start | Finish | Predecessors | Complete | Remaining | Total slack | Free slack | Constraint | Resources | Work | Actual work |
| --- | --- | --- | --- | --- | --- | --- | --- | --- | --- | --- | --- | --- | --- | --- | --- |
| 295 | 1.4.4.15 | **Проверка работоспособности решения - Организация демонстрации** |  | 25d? | 2013-12-09 | 2014-01-22 | 293 |  |  | 98d |  |  |  | 448h |  |
| 296 | 1.4.4.15.1 | Подготовка стенда |  | 3d | 2013-12-09 | 2013-12-11 | 297SF |  |  | 120d |  |  | Влад Симоненко; Аналитик | 48h |  |
| 297 | 1.4.4.15.2 | Подготовка прототипа |  | 20d? | 2013-12-09 | 2014-01-15 |  |  |  | 98d | 0d |  | Влад Симоненко; Аналитик | 320h |  |
| 298 | 1.4.4.15.3 | Проведение демонстраций |  | 3d | 2014-01-16 | 2014-01-20 | 297 |  |  | 98d | 0d |  | Влад Симоненко; Аналитик | 48h |  |
| 299 | 1.4.4.15.4 | Анализ результатов - выводы |  | 2d | 2014-01-21 | 2014-01-22 | 298 |  |  | 98d |  |  | Влад Симоненко; Аналитик | 32h |  |
| 300 | 1.4.4.16 | **Сервис работы с вложениями** |  | 22d | 2013-07-11 A | 2013-08-09 A |  | 100% |  |  |  |  |  | 176h | 176h |
| 301 | 1.4.4.16.1 | Принято решение о проектировании сервиса обработки вложений | milestone | 0d | 2013-07-11 A | 2013-07-11 A |  | 100% |  |  |  | start no earlier than 2013-07-11 |  |  |  |
| 302 | 1.4.4.16.2 | API |  | 5d | 2013-07-11 A | 2013-07-17 A | 301 | 100% |  |  |  |  | Андрей Цветков | 40h | 40h |
| 303 | 1.4.4.16.3 | Реализация |  | 7d | 2013-07-18 A | 2013-07-26 A | 302 | 100% |  |  |  |  | Влад Симоненко | 56h | 56h |
| 304 | 1.4.4.16.4 | Исследования по перехватчику конца транзакции |  | 5d | 2013-07-29 A | 2013-08-02 A | 303 | 100% |  |  |  |  | Влад Симоненко | 40h | 40h |
| 305 | 1.4.4.16.5 | Чистка файлов в случае отката транзакции |  | 5d | 2013-08-05 A | 2013-08-09 A | 304 | 100% |  |  |  |  | Влад Симоненко | 40h | 40h |
| 306 | 1.4.4.17 | **Работа с отчетами** |  | 48d | 2013-09-30 | 2013-12-04 |  |  |  | 125d |  |  |  | 276h |  |
| 307 | 1.4.4.17.1 | Система готова к интеграции с модулем отчетов | milestone | 0d | 2013-09-30 | 2013-09-30 |  |  |  | 140d | 15d | start no earlier than 2013-09-30 | Денис Митавский [50%]; Андрей Цветков |  |  |
| 308 | 1.4.4.17.2 | JDBC-драйвер для системы построения отчётов |  | 8d | 2013-10-21 | 2013-10-30 | 59, 307 |  |  | 125d | 0d |  | Денис Митавский [50%]; Андрей Цветков | 96h |  |
| 309 | 1.4.4.17.3 | Интеграция с Jasper Reports |  | 15d | 2013-10-31 | 2013-11-20 | 308, 74 |  |  | 125d | 0d |  | Денис Митавский [50%]; Андрей Цветков | 180h |  |
| 310 | 1.4.4.17.4 | GUI - отображение отчётов |  | 10d | 2013-11-21 | 2013-12-04 | 309 |  |  | 125d |  |  |  |  |  |
| 311 | 1.4.4.18 | **GUI** |  | 161d? | 2013-04-22 A | 2013-12-09 |  | 43% | 91.8d? | 120d | 0d |  |  | 2056h | 838.4h |
| 312 | 1.4.4.18.1 | Принято решение о применении GWT-компонентов | milestone | 0d | 2013-07-22 A | 2013-07-22 A |  | 100% |  |  |  | start no earlier than 2013-07-22 |  |  |  |
| 313 | 1.4.4.18.2 | Адаптация компонентов GUI из СМ4 для наложения на архитектуру см5 |  | 40d | 2013-07-22 A | 2013-09-16 | 312 | 75% | 10d | 180d |  | start no earlier than 2013-07-11 | Тимофей Билый; Алексей Львов | 640h | 480h |
| 314 | 1.4.4.18.3 | Изучение GWT/Настройка CMJ 4 для дебага |  | 4d | 2013-08-05 A | 2013-08-08 A |  | 100% |  |  |  | start no earlier than 2013-08-05 | Андрей Карандей | 32h | 32h |
| 315 | 1.4.4.18.4 | Разработка базовой архитектуры GUI на основе GWT-компонентов |  | 3d | 2013-07-22 A | 2013-07-24 A | 312 | 100% |  |  |  |  | Денис Митавский | 24h | 24h |
| 316 | 1.4.4.18.5 | Интеграция с JAAS/Аутентификация |  | 5d | 2013-07-31 A | 2013-08-06 A | 315 | 100% |  |  |  | start no earlier than 2013-07-08 | Денис Митавский | 40h | 40h |
| 317 | 1.4.4.18.6 | Архитектура разметки главного экрана |  | 2d | 2013-08-07 A | 2013-08-08 A | 316 | 100% |  |  |  |  | Денис Митавский [50%] | 8h | 8h |
| 318 | 1.4.4.18.7 | **Панель навигации** |  | 29d | 2013-08-09 A | 2013-09-18 |  | 85% | 4.35d | 173d |  |  |  | 56h | 46.4h |
| 319 | 1.4.4.18.7.1 | Проектирование - панель навигации |  | 2d | 2013-08-09 A | 2013-08-12 A | 317 | 100% |  |  |  |  | Денис Митавский [50%] | 8h | 8h |
| 320 | 1.4.4.18.7.2 | Разработка - панель навигации |  | 6d | 2013-09-11 A | 2013-09-18 | 319, 322 | 80% | 1.2d | 173d | 0d |  | Андрей Карандей | 48h | 38.4h |
| 321 | 1.4.4.18.8 | GUI - архитектура плагинов/дочерних плагинов. Базис |  | 15d | 2013-08-13 A | 2013-09-03 A | 319 | 100% |  |  |  |  | Денис Митавский | 120h | 120h |
| 322 | 1.4.4.18.9 | Базовая реализация архитектуры плагинов |  | 5d | 2013-09-04 A | 2013-09-10 A | 321 | 100% |  |  |  |  | Андрей Карандей | 40h | 40h |

Notes:
- 307: Используя язык запросов коллеций
- 308: Используя язык запросов коллеций

| ID | WBS | Task | Duration | Start | Finish | Predecessors | Complete | Remaining | Total slack | Free slack | Resources | Work | Actual work |
| --- | --- | --- | --- | --- | --- | --- | --- | --- | --- | --- | --- | --- | --- |
| 323 | 1.4.4.18.10 | **GUI - плагин отображения коллекций** | 15d | 2013-09-04 | 2013-09-24 | 321 |  |  | 174d |  |  | 64h |  |
| 324 | 1.4.4.18.10.1 | Проектирование | 2d | 2013-09-04 | 2013-09-05 | 321 |  |  | 183d | 0d | Денис Митавский | 16h |  |
| 325 | 1.4.4.18.10.2 | Разработка | 6d | 2013-09-17 | 2013-09-24 | 331 |  |  | 174d |  | Ярослав Бондарчук | 48h |  |
| 326 | 1.4.4.18.11 | **GUI - действия** | 96d | 2013-04-22 A | 2013-09-09 |  | 13% | 84d | 182d | 0d |  | 8h | 4h |
| 327 | 1.4.4.18.11.1 | Проектирование | 2d | 2013-09-06 A | 2013-09-09 | 324 | 50% | 1d | 182d |  | Денис Митавский [50%] | 8h | 4h |
| 328 | 1.4.4.18.11.2 | Разработка | 6d | 2013-04-22 | 2013-04-29 |  |  |  | 272d |  |  |  |  |
| 329 | 1.4.4.18.12 | **Формы встроенного GUI** | 15d | 2013-09-10 A | 2013-09-30 |  | 38% | 9.38d | 170d |  |  | 124h | 44h |
| 330 | 1.4.4.18.12.1 | Конфигурация-архитектура | 1d | 2013-09-10 A | 2013-09-10 A | 327 | 100% |  |  |  | Денис Митавский [50%] | 4h | 4h |
| 331 | 1.4.4.18.12.2 | Маппинг на объекты | 2d | 2013-09-13 A | 2013-09-16 A | 330 | 100% |  |  |  | Ярослав Бондарчук | 16h | 16h |
| 332 | 1.4.4.18.12.3 | API GWT client-server | 3d | 2013-09-13 A | 2013-09-17 A | 330 | 100% |  |  |  | Денис Митавский | 24h | 24h |
| 333 | 1.4.4.18.12.4 | Реализация чтения | 5d | 2013-09-24 | 2013-09-30 | 49 |  |  | 120d | 0d | Денис Митавский | 40h |  |
| 334 | 1.4.4.18.12.5 | Реализация сохранения | 5d | 2013-09-19 | 2013-09-25 | 320, 332 |  |  | 173d |  | Андрей Карандей | 40h |  |
| 335 | 1.4.4.18.13 | **GUI - поиск** | 11d | 2013-10-01 | 2013-10-15 |  |  |  | 159d |  |  | 72h |  |
| 336 | 1.4.4.18.13.1 | GUI - поиск. Проектирование | 4d | 2013-10-01 | 2013-10-04 | 333 |  |  | 159d | 0d | Денис Митавский [50%] | 16h |  |
| 337 | 1.4.4.18.13.2 | GUI - поиск. Реализация | 7d | 2013-10-07 | 2013-10-15 | 336 |  |  | 159d |  | Андрей Карандей | 56h |  |
| 338 | 1.4.4.18.14 | **GUI - виджеты разработка** | 50d? | 2013-10-01 | 2013-12-09 |  |  |  | 120d |  |  | 808h |  |
| 339 | 1.4.4.18.14.1 | Дата/время | 1d? | 2013-10-01 | 2013-10-01 | 333 |  |  | 169d |  | Тимофей Билый | 8h |  |
| 340 | 1.4.4.18.14.2 | Остальные без особенностей стиля ст.лебедева (базовый набор) | 25d? | 2013-10-01 | 2013-11-04 | 333 |  |  | 120d | 0d | Тимофей Билый; Алексей Львов | 400h |  |
| 341 | 1.4.4.18.14.3 | Остальные для стиля ст.лебедева | 25d? | 2013-11-05 | 2013-12-09 | 340 |  |  | 120d |  | Андрей Карандей; Алексей Львов | 400h |  |
| 342 | 1.4.4.18.15 | **GUI - брендинг, стилизация, темы** | 5d | 2013-11-05 | 2013-11-11 |  |  |  | 140d |  |  | 20h |  |
| 343 | 1.4.4.18.15.1 | Концепция | 5d | 2013-11-05 | 2013-11-11 | 336, 340 |  |  | 140d |  | Денис Митавский [50%] | 20h |  |
| 344 | 1.4.4.19 | Тестирование производительности | 25d | 2013-09-10 A | 2013-10-14 | 326 | 80% | 5d | 162d |  | (БТЛ)Сергей Степыгин; (БТЛ) Дмитрий Лякин | 400h | 320h |
| 345 | 1.4.4.20 | **Дополнительные сервисы платформы** | 93d | 2013-08-28 | 2014-01-15 |  |  |  | 21.14d |  |  | 952h |  |
| 346 | 1.4.4.20.1 | Расширение функциональности DAO (требования CMJ4.1, базовые требования) | 30d | 2013-08-28 | 2013-10-08 | 36 |  |  | 21.14d | 0d | Валерий Мацукевич | 240h |  |
| 347 | 1.4.4.20.2 | Выделение конфигурации GUI в отдельные сущности, к изменению формата которых система не будет восприимчива | 9d | 2013-10-09 | 2013-10-21 | 346 |  |  | 21.14d | 0d | Валерий Мацукевич | 72h |  |
| 348 | 1.4.4.20.3 | Защита конфигурационных файлов от изменений | 5d | 2013-10-22 | 2013-10-28 | 347 |  |  | 21.14d | 0d | Валерий Мацукевич | 40h |  |
| 349 | 1.4.4.20.4 | Версионность/аудит | 8d | 2013-10-29 | 2013-11-07 | 348 |  |  | 21.14d | 0d | Валерий Мацукевич | 64h |  |
| 350 | 1.4.4.20.5 | Блокировки бизнес-объектов | 6d | 2013-11-08 | 2013-11-15 | 349 |  |  | 21.14d | 0d | Валерий Мацукевич | 48h |  |
| 351 | 1.4.4.20.6 | Описание структуры модуля Делопроизводство | 20d | 2013-09-10 | 2013-10-07 | 21, 15, 14, 65 |  |  | 145d | 4d | Владимир Панов | 160h |  |
| 352 | 1.4.4.20.7 | Уточнение состава и сроков работ | 2d | 2013-12-10 | 2013-12-11 | 311 |  |  | 120d |  | Андрей Пирожков; Денис Митавский; Тугушев Илья | 48h |  |
| 353 | 1.4.4.20.8 | Кросс-СУБД, поддержка Oracle | 15d | 2013-11-18 | 2013-12-06 | 350 |  |  | 21.14d | 0d | Валерий Мацукевич | 120h |  |
| 354 | 1.4.4.20.9 | SQL-trace | 5d | 2013-12-09 | 2013-12-13 | 353 |  |  | 103d | 0d | Влад Симоненко | 40h |  |
| 355 | 1.4.4.20.10 | Локализация (на уровне конфигурации) | 15d | 2013-12-16 | 2014-01-15 | 354 |  |  | 103d |  | Влад Симоненко | 120h |  |

Notes:
- 344: - полноценное, продуманное, конфигурируемое, полностью автоматизированное (вплоть до промежуточного сбора статистики в СУБД перед запуском тестов производительности) с автоматической генерацией таблиц и графиков, с поддержкой нагружающих потоков и т.п.
- 349: История модификации объекта / Версионность - на бизнес слой
- 353: Кросс-СУБД, поддержка Oracle
- 355: Поддержка ресурсных файлов - в расках конфигурирования ресурсных файлов / Подмена языка в интерфейсе (передача локали пользоввателю) -

| ID | WBS | Task | Duration | Start | Finish | Predecessors | Complete | Remaining | Total slack | Free slack | Resources | Work | Actual work |
| --- | --- | --- | --- | --- | --- | --- | --- | --- | --- | --- | --- | --- | --- |
| 356 | 1.4.4.21 | **Интеграция с системой управления учетными записями** | 14d | 2013-11-18 | 2013-12-05 | 350 |  |  | 124d |  |  | 56h |  |
| 357 | 1.4.4.21.1 | Интеграция с ActiveDirectory | 14d | 2013-11-18 | 2013-12-05 |  |  |  | 124d |  | Андрей Пирожков [50%] | 56h |  |
| 358 | 1.4.4.22 | **Расширение функций сервиса конфигурации** | 128d | 2013-07-09 A | 2014-01-14 | 353 | 32% | 86.86d | 89d |  |  | 352h | 72h |
| 359 | 1.4.4.22.1 | Расширяемость конфигурации | 12d | 2013-07-09 A | 2013-12-11 |  | 75% | 3d | 89d | 0d | Валерий Мацукевич | 96h | 72h |
| 360 | 1.4.4.22.2 | Изменение и дополнение конфигурации системы | 16d | 2013-12-12 | 2014-01-14 | 359 |  |  | 89d | 0d | Андрей Пирожков; Роман Митинков | 256h |  |
| 361 | 1.4.4.23 | **Сервис для работы с системным журналом** | 15d | 2014-01-15 | 2014-02-04 | 360 |  |  | 89d |  |  | 120h |  |
| 362 | 1.4.4.23.1 | Ведение журнала действий пользователей и действий с объектами системы | 10d | 2014-01-15 | 2014-01-28 |  |  |  | 89d | 0d | Андрей Карандей | 80h |  |
| 363 | 1.4.4.23.2 | Настройка уровня логирования | 5d | 2014-01-29 | 2014-02-04 | 362 |  |  | 89d |  | Андрей Карандей | 40h |  |
| 364 | 1.4.5 | **Разработка** | 209d | 2013-06-11 A | 2014-04-09 | 15 | 17% | 173.03d | 111d |  |  | 4756h | 926.4h |
| 365 | 1.4.5.1 | Контроль и корректировка технических решений "Архитектурный комитет" | 209d | 2013-06-11 A | 2014-04-09 |  | 38% | 130d | 111d |  | Тугушев Илья [20%]; Андрей Пирожков [23.2%]; Денис Митавский [20%]; WEB-дизайнер [20%]; Аналитик [20%]; Владимир Панов [50%] | 2436h | 926.4h |
| 366 | 1.4.5.2 | Разработка серверной логики модуля CMJ | 40d | 2013-10-14 | 2013-12-06 | 15, 44, 351 |  |  | 141d | 0d |  |  |  |
| 367 | 1.4.5.3 | **Разработка Форм для АРМ тематических администраторов** | 40d | 2013-12-23 | 2014-02-27 | 70 |  |  | 140.75d |  |  | 960h |  |
| 368 | 1.4.5.3.1 | **Подготовка работы со списками значений** | 40d | 2013-12-23 | 2014-02-27 |  |  |  | 140.75d |  |  | 640h |  |
| 369 | 1.4.5.3.1.1 | Разработка функционала учета организационно штатной структуры | 40d | 2013-12-23 | 2014-02-17 |  |  |  | 140.75d |  | Андрей Цветков | 320h |  |
| 370 | 1.4.5.3.1.2 | Разработка функционала с рубрикаторами (сложные справочники) | 20d | 2013-12-23 | 2014-01-30 |  |  |  | 140.75d | 0d | Валерий Мацукевич | 160h |  |
| 371 | 1.4.5.3.1.3 | Разработка функционала для работы с словарями данных (простые, линейные справочники) | 20d | 2014-01-30 | 2014-02-27 | 370 |  |  | 140.75d |  | Валерий Мацукевич | 160h |  |
| 372 | 1.4.5.3.2 | Разработка форм для работы в GUI (настройки форм) | 15d | 2013-12-23 | 2014-01-23 |  |  |  | 160.75d | 0d | Java разработчик3 | 120h |  |
| 373 | 1.4.5.3.3 | Разработка структуры рабочего места АРМ | 5d | 2014-01-23 | 2014-01-30 | 372 |  |  | 160.75d |  | Java разработчик3 | 40h |  |
| 374 | 1.4.5.3.4 | Разработка специфичных для форм АРМ элементов GUI | 20d | 2013-12-23 | 2014-01-30 |  |  |  | 160.75d |  | Java разработчик4 | 160h |  |
| 375 | 1.4.5.4 | Подготовка отчетов | 40d | 2013-10-29 | 2013-12-23 | 74 |  |  | 132d | 41.2d | Влад Симоненко; Алексей Львов; Андрей Карандей | 960h |  |
| 376 | 1.4.5.5 | Сопряжение с мобильным клиентом СМ4 | 50d | 2013-12-09 | 2014-02-26 | 366 |  |  | 141d |  | Java разработчик3 | 400h |  |
| 377 | 1.4.6 | **Тестирование** | 68d? | 2014-02-10 | 2014-05-15 | 20 |  |  | 85.8d | 0d |  | 2544h |  |
| 378 | 1.4.6.1 | **Функциональное тестирование** | 53d? | 2014-02-10 | 2014-04-24 |  |  |  | 85.8d |  |  | 2224h |  |
| 379 | 1.4.6.1.1 | Подготовка ПМИ | 5d | 2014-02-10 | 2014-02-17 |  |  |  | 85.8d | 0d | Тест Аналитик | 40h |  |
| 380 | 1.4.6.1.2 | Разработка "сценариев тестирования" | 15d | 2014-02-10 | 2014-03-03 |  |  |  | 90.8d | 0d | Тест Аналитик | 120h |  |
| 381 | 1.4.6.1.3 | Разработка модели нагрузки для тестирования | 10d | 2014-02-17 | 2014-03-03 | 379 |  |  | 90.8d | 0d | Тест Аналитик | 80h |  |
| 382 | 1.4.6.1.4 | Адаптация автоматизированных сценариев от СМ4 для создания нагрузки | 25d | 2014-02-17 | 2014-03-24 | 379 |  |  | 85.8d | 0d | Влад Симоненко | 200h |  |

Notes:
- 361: Сервис для работы с системным журналомВедение журнала действий пользователей и действий с объектами системы
- 362: Ведение журнала действий пользователей и действий с объектами системы

| ID | WBS | Task | Type | Duration | Start | Finish | Predecessors | Total slack | Free slack | Constraint | Resources | Work |
| --- | --- | --- | --- | --- | --- | --- | --- | --- | --- | --- | --- | --- |
| 383 | 1.4.6.1.5 | **Проведение тестирования** |  | 38d? | 2014-03-03 | 2014-04-24 | 380, 381 | 90.8d |  |  |  | 1784h |
| 384 | 1.4.6.1.5.1 | **Подготовка среды тестирования** |  | 10d? | 2014-03-03 | 2014-03-17 |  | 90.8d |  |  |  | 200h |
| 385 | 1.4.6.1.5.1.1 | Разворачивание системы |  | 5d? | 2014-03-03 | 2014-03-10 | 387SF | 133.8d | 0d |  | Влад Симоненко | 40h |
| 386 | 1.4.6.1.5.1.2 | Система готова для подключения инструментов мониторинга | milestone | 0d | 2014-03-10 | 2014-03-10 | 385 | 133.8d |  |  |  |  |
| 387 | 1.4.6.1.5.1.3 | Наполнение данными |  | 10d? | 2014-03-03 | 2014-03-17 | 375 | 90.8d | 5d |  | Влад Симоненко; Java разработчик6 | 160h |
| 388 | 1.4.6.1.5.2 | Среда тестирования готова | milestone | 0d | 2014-03-24 | 2014-03-24 | 387, 382 | 85.8d | 0d | start no earlier than 2012-05-24 |  |  |
| 389 | 1.4.6.1.5.3 | Проведение тестирования |  | 10d | 2014-03-24 | 2014-04-07 | 388 | 85.8d | 0d |  | Тест Аналитик; Тестировщик [200%] | 240h |
| 390 | 1.4.6.1.5.4 | **Обработка результатов тестирования и внесение изменений в модуль** |  | 15d | 2014-04-03 | 2014-04-24 | 389FS-2d | 85.8d |  |  |  | 1344h |
| 391 | 1.4.6.1.5.4.1 | Устранение замечаний по результатам функционального тестирования |  | 15d | 2014-04-03 | 2014-04-24 |  | 85.8d | 0d |  | Java разработчик5; Влад Симоненко [300%]; Валерий Мацукевич; Java разработчик3; Java разработчик4; Андрей Карандей; Алексей Львов; Андрей Цветков | 1200h |
| 392 | 1.4.6.1.5.4.2 | Проверка устранения замечаний |  | 6d | 2014-04-16 | 2014-04-24 | 391FS-6d | 85.8d | 0d |  | Тест Аналитик; Тестировщик [200%] | 144h |
| 393 | 1.4.6.2 | **Нагрузочное тестирование** |  | 28d | 2014-04-07 | 2014-05-15 | 379 | 85.8d |  |  |  | 320h |
| 394 | 1.4.6.2.1 | Стенд для нагрузочного тестирования подготовлен | milestone | 0d | 2014-04-07 | 2014-04-07 | 389 | 98.8d | 13d | finish no earlier than 2012-06-09 |  |  |
| 395 | 1.4.6.2.2 | Проведения нагрузочного тестирования |  | 10d | 2014-04-24 | 2014-05-08 | 392, 382, 394 | 85.8d | 0d |  | Влад Симоненко; Тест Аналитик; Тестировщик | 240h |
| 396 | 1.4.6.2.3 | Обработка результатов нагрузочного тестирования |  | 5d | 2014-05-08 | 2014-05-15 | 395 | 85.8d |  |  | Тест Аналитик; Тестировщик | 80h |
| 397 | 1.4.7 | **Подготовка документации** |  | 80d? | 2014-02-10 | 2014-06-02 | 377SS | 73.8d |  |  |  | 640h |
| 398 | 1.4.7.1 | Разработка документа "Концепция системы " |  | 40d | 2014-02-10 | 2014-04-07 |  | 73.8d | 0d |  | Владимир Панов | 320h |
| 399 | 1.4.7.2 | Разработка "Software Architecture Document" |  | 40d | 2014-04-07 | 2014-06-02 | 398 | 73.8d | 0d |  | Владимир Панов | 320h |
| 400 | 1.4.7.3 | Документы подготовлены | milestone | 0d | 2014-06-02 | 2014-06-02 | 399 | 73.8d |  |  |  |  |
